# GaleriaDevoto-SitioWeb-2014

How a schedule from MS Project changed from version to version. A marks actual dates.

## Version 1 (saved 2014-06-01)

Note of the change: Reestructuración de carpetas por claridad

| ID | WBS | Task | Duration | Start | Finish | Predecessors | Complete | Total float | Constraint |
| --- | --- | --- | --- | --- | --- | --- | --- | --- | --- |
| 1 | 1 | **Tareas Comunes** | 43d? | 2014-05-19 09:00 A | 2014-07-14 19:00 |  | 3% | 0d |  |
| 2 |  | Obtener listado completo de locales | 1h | 2014-05-19 09:00 A | 2014-05-19 10:00 A |  | 100% |  | start no earlier than 2014-05-19 09:00 |
| 3 |  | Sacar fotos de locales | 2h | 2014-05-28 16:00 A | 2014-05-28 18:00 |  | 50% | 35.12d | finish no earlier than 2014-05-28 18:00 |
| 4 |  | Sacar fotos de galería | 4h? | 2014-05-28 12:00 | 2014-05-28 18:00 |  |  | 35.12d | finish no earlier than 2014-05-28 18:00 |
| 5 |  | Tomar snapshot de indicadores (sitio web viejo) | 4h? | 2014-06-20 09:00 | 2014-06-20 13:00 | 42, 21 |  | 16.5d | start no earlier than 2014-05-21 09:00 |
| 6 |  | Configurar el control de código | 1h | 2014-05-23 09:00 A | 2014-05-23 10:00 A |  | 100% |  | start no earlier than 2014-05-23 09:00 |
| 7 |  | Detectar user agent con asp.net y redirigir a sitio correcto | 8h? | 2014-05-27 09:00 | 2014-05-27 19:00 |  |  | 36d | start no earlier than 2014-05-27 09:00 |
| 8 |  | Preparar el hosting Dattatec para funcionar con ASP.NET | 1h | 2014-05-27 09:00 A | 2014-05-27 10:00 A |  | 100% |  | start no earlier than 2014-05-27 09:00 |
| 9 |  | Validar código HTML | 8h? | 2014-07-07 09:00 | 2014-07-07 19:00 | 15, 49 |  | 4.5d | start no earlier than 2014-05-21 09:00 |
| 10 |  | Validar código CSS | 8h? | 2014-07-07 09:00 | 2014-07-07 19:00 | 15, 49 |  | 4.5d | start no earlier than 2014-05-21 09:00 |
| 11 |  | Agregar validaciones HTML y CSS exitosas al sitio web | 4h? | 2014-07-08 09:00 | 2014-07-08 13:00 | 9, 10 |  | 4.5d | start no earlier than 2014-05-21 09:00 |
| 12 |  | Obtener descripción detallada de locales | 40h? | 2014-05-19 09:00 | 2014-05-23 19:00 |  |  | 38d |  |
| 13 |  | Obtener productos promocionados por local | 40h? | 2014-05-19 09:00 | 2014-05-23 19:00 |  |  | 38d |  |
| 14 |  | Prueba UAT (Aceptación de usuario) | 16h? | 2014-07-11 09:00 | 2014-07-14 19:00 | 15, 49, 59, 62 |  | 0d |  |
| 15 | 2 | **Construcción de nuevo sitio web desktop** | 22d? | 2014-05-26 09:00 A | 2014-06-20 19:00 |  |  | 8d |  |
| 16 |  | Realizar boceto de sitio web en programa de diseño gráfico | 8h? | 2014-05-26 09:00 | 2014-05-26 19:00 |  |  | 29d | start no earlier than 2014-05-26 09:00 |
| 17 |  | Definir colores | 2h? | 2014-05-27 09:00 | 2014-05-27 11:00 |  |  | 28.75d | start no earlier than 2014-05-27 09:00 |
| 18 |  | Definir tipo y tamaño de fuente | 2h? | 2014-05-28 09:00 | 2014-05-28 11:00 |  |  | 27.75d | start no earlier than 2014-05-28 09:00 |
| 19 |  | Definir resolución mínima sin scroll | 1h | 2014-05-29 09:00 A | 2014-05-29 10:00 A |  | 100% |  | start no earlier than 2014-05-29 09:00 |
| 20 |  | Prueba integral en navegadores | 8h? | 2014-06-20 09:00 | 2014-06-20 19:00 | 21, 42 |  | 8d |  |
| 21 | 2.6 | **Páginas web principales** | 5.12d? | 2014-05-30 09:00 | 2014-06-05 10:00 |  |  | 19.88d |  |
| 22 | 2.6.1 | **Home** | 4d? | 2014-05-30 09:00 | 2014-06-03 19:00 |  |  | 21d |  |
| 23 |  | Definir título | 1h? | 2014-05-30 09:00 | 2014-05-30 10:00 |  |  | 24.88d | start no earlier than 2014-05-30 09:00 |
| 24 |  | Definir descripción | 1h? | 2014-05-30 09:00 | 2014-05-30 10:00 |  |  | 24.88d | start no earlier than 2014-05-30 09:00 |
| 25 |  | Definir contenido estático y dinámico | 8h? | 2014-05-31 09:00 | 2014-05-31 19:00 |  |  | 22d | start no earlier than 2014-05-31 09:00 |
| 26 |  | Construir MasterPage Principal | 8h? | 2014-06-03 09:00 | 2014-06-03 19:00 | 25 |  | 21d | start no earlier than 2014-06-03 09:00 |
| 27 | 2.6.2 | **Contacto** | 2.12d? | 2014-06-02 09:00 | 2014-06-04 10:00 |  |  | 20.88d |  |
| 28 |  | Definir título | 1h? | 2014-06-04 09:00 | 2014-06-04 10:00 |  |  | 20.88d | start no earlier than 2014-06-04 09:00 |
| 29 |  | Definir descripción | 1h? | 2014-06-04 09:00 | 2014-06-04 10:00 |  |  | 20.88d | start no earlier than 2014-06-04 09:00 |
| 30 |  | Agregar la información que aparece en página ubicación | 2h? | 2014-06-02 09:00 | 2014-06-02 11:00 |  |  | 22.75d | start no earlier than 2014-06-02 09:00 |
| 31 |  | Actualizar transporte público | 1h? | 2014-06-02 09:00 | 2014-06-02 10:00 |  |  | 22.88d | start no earlier than 2014-06-02 09:00 |
| 32 |  | Agregar link a fan page Facebook | 2h? | 2014-06-02 09:00 | 2014-06-02 11:00 |  |  | 22.75d | start no earlier than 2014-06-02 09:00 |
| 33 |  | Aclarar horarios de atención al público y de administración | 1h? | 2014-06-02 09:00 | 2014-06-02 10:00 |  |  | 22.88d | start no earlier than 2014-06-02 09:00 |
| 34 | 2.6.3 | **Villa Devoto** | 2.12d? | 2014-06-03 09:00 | 2014-06-05 10:00 |  |  | 19.88d |  |
| 35 |  | Definir título | 1h? | 2014-06-05 09:00 | 2014-06-05 10:00 |  |  | 19.88d | start no earlier than 2014-06-05 09:00 |
| 36 |  | Definir descripción | 1h? | 2014-06-05 09:00 | 2014-06-05 10:00 |  |  | 19.88d | start no earlier than 2014-06-05 09:00 |
| 37 |  | Agregar direcciones de los lugares | 4h? | 2014-06-03 09:00 | 2014-06-03 13:00 |  |  | 21.5d | start no earlier than 2014-06-03 09:00 |
| 38 | 2.6.4 | **Error 404 (Not Found)** | 0.5d? | 2014-06-04 09:00 | 2014-06-04 13:00 |  |  | 20.5d |  |
| 39 |  | Definir estructura | 4h? | 2014-06-04 09:00 | 2014-06-04 13:00 |  |  | 20.5d | start no earlier than 2014-06-04 09:00 |
| 40 |  | Definir imagen | 2h? | 2014-06-04 09:00 | 2014-06-04 11:00 |  |  | 20.75d | start no earlier than 2014-06-04 09:00 |
| 41 |  | Definir texto | 2h? | 2014-06-04 09:00 | 2014-06-04 11:00 |  |  | 20.75d | start no earlier than 2014-06-04 09:00 |
| 42 | 2.7 | **Páginas de locales** | 12d? | 2014-06-05 09:00 | 2014-06-19 19:00 |  |  | 8d |  |
| 43 |  | Definir títulos | 40h? | 2014-06-07 09:00 | 2014-06-12 19:00 |  |  | 13d | start no earlier than 2014-06-07 09:00 |
| 44 |  | Definir descripciones | 40h? | 2014-06-07 09:00 | 2014-06-12 19:00 |  |  | 13d | start no earlier than 2014-06-07 09:00 |
| 45 |  | Definir estructura de página | 8h? | 2014-06-05 09:00 | 2014-06-05 19:00 |  |  | 8d | start no earlier than 2014-06-05 09:00 |
| 46 |  | Construir MasterPage Local | 8h? | 2014-06-06 09:00 | 2014-06-06 19:00 | 45 |  | 8d | start no earlier than 2014-06-06 09:00 |
| 47 |  | Buscar un slider de imágenes y aprender a usarlo | 8h? | 2014-06-07 09:00 | 2014-06-07 19:00 |  |  | 17d | start no earlier than 2014-06-07 09:00 |
| 48 |  | Construir páginas | 80h? | 2014-06-07 09:00 | 2014-06-19 19:00 | 46 |  | 8d | start no earlier than 2014-06-07 09:00 |
| 49 | 3 | **Construcción de nuevo sitio web mobile** | 10d? | 2014-06-23 09:00 | 2014-07-04 19:00 | 15 |  | 3d |  |
| 50 |  | Realizar boceto de sitio web en programa de diseño gráfico | 8h? | 2014-06-23 09:00 | 2014-06-23 19:00 |  |  | 12d |  |
| 51 |  | Definir colores | 2h? | 2014-06-24 09:00 | 2014-06-24 11:00 |  |  | 11.75d | start no earlier than 2014-06-24 09:00 |
| 52 |  | Definir tipo y tamaño de fuente | 2h? | 2014-06-24 09:00 | 2014-06-24 11:00 |  |  | 11.75d | start no earlier than 2014-06-24 09:00 |
| 53 |  | Definir estructura del sitio | 8h? | 2014-06-24 09:00 | 2014-06-24 19:00 |  |  | 11d | start no earlier than 2014-06-24 09:00 |
| 54 |  | Definir páginas del sitio | 2h? | 2014-06-25 09:00 | 2014-06-25 11:00 |  |  | 10.75d | start no earlier than 2014-06-25 09:00 |
| 55 |  | Construir página principal | 8h? | 2014-06-26 09:00 | 2014-06-26 19:00 |  |  | 9d | start no earlier than 2014-06-26 09:00 |
| 56 |  | Construir página de locales | 40h? | 2014-06-27 09:00 | 2014-07-03 19:00 |  |  | 4d | start no earlier than 2014-06-27 09:00 |
| 57 |  | Construir página de contacto | 8h? | 2014-07-04 09:00 | 2014-07-04 19:00 |  |  | 3d | start no earlier than 2014-07-04 09:00 |
| 58 |  | Prueba integral en navegadores mobile | 8h? | 2014-07-04 09:00 | 2014-07-04 19:00 |  |  | 3d | start no earlier than 2014-07-04 09:00 |
| 59 | 4 | **Actualización de datos en Google Places** | 0.25d? | 2014-05-19 09:00 A | 2014-05-19 11:00 |  | 33% | 40.75d |  |
| 60 |  | Pedir descripción principal de ficha | 2h? | 2014-05-19 09:00 | 2014-05-19 11:00 |  |  | 40.75d |  |
| 61 |  | Sacar el télefono de la ficha | 1h | 2014-05-19 09:00 A | 2014-05-19 10:00 A |  | 100% |  |  |
| 62 | 5 | **Fan page Facebook** | 4d? | 2014-07-07 09:00 | 2014-07-10 19:00 | 49 |  | 0d |  |
| 63 |  | Subir Fotos | 2h? | 2014-07-07 09:00 | 2014-07-07 11:00 |  |  | 3.75d |  |
| 64 |  | Escribir descripción y proposito de fan page | 4h? | 2014-07-08 09:00 | 2014-07-08 13:00 |  |  | 2.5d | start no earlier than 2014-07-08 09:00 |
| 65 |  | Comentar a Gonzalo el proposito de la fan page | 4h? | 2014-07-09 09:00 | 2014-07-09 13:00 |  |  | 1.5d | start no earlier than 2014-07-09 09:00 |
| 66 |  | Subir promociones | 8h? | 2014-07-10 09:00 | 2014-07-10 19:00 |  |  | 0d | start no earlier than 2014-07-10 09:00 |
| 67 | 6 | **Tareas Repetitivas** | 1d? | 2014-05-19 09:00 | 2014-05-19 19:00 |  |  | 42d |  |
| 68 |  | Actualizar documento de SEO | 8h? | 2014-05-19 09:00 | 2014-05-19 19:00 |  |  | 42d | start no earlier than 2014-05-19 09:00 |
| 69 |  | Probar sitio web en PC | 8h? | 2014-05-19 09:00 | 2014-05-19 19:00 |  |  | 42d |  |
| 70 |  | Probar sitio web en dispositivos móviles | 8h? | 2014-05-19 09:00 | 2014-05-19 19:00 |  |  | 42d |  |

## Version 2 (saved 2014-06-17)

Note of the change: Actualización de calendario.

Last finish stays 2014-07-14. Complete tasks 5 → 12.

Added:

| ID | Task | Duration | Start | Finish | Resources |
| --- | --- | --- | --- | --- | --- |
| 62 | Dar de alta ficha e investigar perfil de Google + | 8h? | 2014-05-19 09:00 | 2014-05-19 19:00 | Gustavo |

Changed:

| ID | Task | Start | Finish | Duration | Complete | Total float |
| --- | --- | --- | --- | --- | --- | --- |
| 1 | **Tareas Comunes** |  |  |  | 3% → 10% |  |
| 3 | Sacar fotos de locales |  | 2014-05-28 18:00 → 2014-05-29 12:00 A (+1d) | 2h → 6h | 50% → 100% | 35.12d → none |
| 4 | Sacar fotos de galería | 2014-05-28 12:00 A |  |  | 0% → 50% |  |
| 7 | Detectar user agent con asp.net y redirigir a sitio correcto | 2014-05-27 09:00 A | 2014-05-27 19:00 → 2014-05-27 11:00 A | 8h? → 2h | 0% → 100% | 36d → none |
| 15 | **Construcción de nuevo sitio web desktop** |  |  |  | 0% → 6% |  |
| 16 | Realizar boceto de sitio web en programa de diseño gráfico | 2014-05-26 09:00 A | 2014-05-26 19:00 → 2014-05-26 12:00 A | 8h? → 3h | 0% → 100% | 29d → none |
| 17 | Definir colores | 2014-05-27 09:00 A | 2014-05-27 11:00 → 2014-05-27 12:00 A | 2h? → 3h | 0% → 100% | 28.75d → none |
| 21 | **Páginas web principales** | 2014-05-30 09:00 A |  |  | 0% → 9% |  |
| 22 | **Home** | 2014-05-30 09:00 A |  |  | 0% → 23% |  |
| 25 | Definir contenido estático y dinámico | 2014-05-31 09:00 A | 2014-05-31 19:00 → 2014-05-31 12:00 A | 8h? → 3h | 0% → 100% | 22d → none |
| 42 | **Páginas de locales** | 2014-06-05 09:00 A |  |  | 0% → 2% |  |
| 45 | Definir estructura de página | 2014-06-05 09:00 A | 2014-06-05 19:00 → 2014-06-05 12:00 A | 8h? → 3h | 0% → 100% | 8d → none |
| 59 | **Actualización de datos en Google Places** |  | 2014-05-19 11:00 → 2014-05-19 19:00 | 0.25d? → 1d? | 33% → 27% | 40.75d → 40d |
| 60 | Pedir descripción principal de ficha | 2014-05-19 09:00 A | 2014-05-19 11:00 A | 2h? → 2h | 0% → 100% | 40.75d → none |

## Version 3 (saved 2014-06-28)

Note of the change: Actualizacion de calendario

Last finish stays 2014-07-14. Complete tasks 12 → 13.

Changed:

| ID | Task | Start | Finish | Duration | Complete | Total float | Other |
| --- | --- | --- | --- | --- | --- | --- | --- |
| 1 | **Tareas Comunes** |  |  |  | 10% → 24% |  |  |
| 12 | Obtener descripción detallada de locales | 2014-05-19 09:00 A | 2014-05-23 19:00 → 2014-05-19 17:00 (-4d) | 40h? → 6h | 0% → 25% | 38d → 42.25d | resources Gustavo; Tamara; Dani → Gustavo; Tamara; Miriam |
| 13 | Obtener productos promocionados por local | 2014-05-19 09:00 A | 2014-05-23 19:00 → 2014-05-19 17:00 (-4d) | 40h? → 6h | 0% → 25% | 38d → 42.25d | resources Gustavo; Tamara; Dani → Gustavo; Tamara; Miriam |
| 18 | Definir tipo y tamaño de fuente | 2014-05-28 09:00 A | 2014-05-28 11:00 → 2014-05-28 10:00 | 2h? → 1h | 0% → 50% | 27.75d → 27.88d |  |
| 59 | **Actualización de datos en Google Places** |  | 2014-05-19 19:00 → 2014-05-19 11:00 A | 1d? → 0.25d | 27% → 100% | 40d → none |  |
| 62 | Dar de alta ficha e investigar perfil de Google + | 2014-05-19 09:00 A | 2014-05-19 19:00 → 2014-05-19 11:00 A | 8h? → 2h | 0% → 100% | 40d → none |  |

## Version 4 (saved 2014-07-05)

Note of the change: Cambio en la página de contacto.

Last finish 2014-07-14 → 2014-07-17 (+3d).

Added:

| ID | Task | Duration | Start | Finish | Constraint | Resources |
| --- | --- | --- | --- | --- | --- | --- |
| 20 | Construir un icono (favicon) | 1h? | 2014-07-07 09:00 | 2014-07-07 10:00 | start no earlier than 2014-07-07 09:00 | Tamara |

Changed:

| ID | Task | Start | Finish | Duration | Total float |
| --- | --- | --- | --- | --- | --- |
| 1 | **Tareas Comunes** |  | 2014-07-14 19:00 → 2014-07-17 10:00 (+3d) | 43d? → 45.12d? |  |
| 9 | Validar código HTML | 2014-07-07 09:00 → 2014-07-14 10:00 (+7d) | 2014-07-07 19:00 → 2014-07-15 10:00 (+8d) |  | 4.5d → 1.5d |
| 10 | Validar código CSS | 2014-07-07 09:00 → 2014-07-14 10:00 (+7d) | 2014-07-07 19:00 → 2014-07-15 10:00 (+8d) |  | 4.5d → 1.5d |
| 11 | Agregar validaciones HTML y CSS exitosas al sitio web | 2014-07-08 09:00 → 2014-07-15 10:00 (+7d) | 2014-07-08 13:00 → 2014-07-15 16:00 (+7d) |  | 4.5d → 1.5d |
| 14 | Prueba UAT (Aceptación de usuario) | 2014-07-11 09:00 → 2014-07-15 10:00 (+4d) | 2014-07-14 19:00 → 2014-07-17 10:00 (+3d) |  |  |
| 15 | **Construcción de nuevo sitio web desktop** |  | 2014-06-20 19:00 → 2014-07-07 10:00 (+17d) | 22d? → 32.12d? | 8d → 0d |
| 50 | **Construcción de nuevo sitio web mobile** | 2014-06-23 09:00 → 2014-07-07 10:00 (+14d) | 2014-07-04 19:00 → 2014-07-14 10:00 (+10d) | 10d? → 5d? | 3d → 0d |
| 51 | Realizar boceto de sitio web en programa de diseño gráfico | 2014-06-23 09:00 → 2014-07-07 10:00 (+14d) | 2014-06-23 19:00 → 2014-07-08 10:00 (+15d) |  | 12d → 4d |
| 52 | Definir colores | 2014-06-24 09:00 → 2014-07-07 10:00 (+13d) | 2014-06-24 11:00 → 2014-07-07 12:00 (+13d) |  | 11.75d → 4.75d |
| 53 | Definir tipo y tamaño de fuente | 2014-06-24 09:00 → 2014-07-07 10:00 (+13d) | 2014-06-24 11:00 → 2014-07-07 12:00 (+13d) |  | 11.75d → 4.75d |
| 54 | Definir estructura del sitio | 2014-06-24 09:00 → 2014-07-07 10:00 (+13d) | 2014-06-24 19:00 → 2014-07-08 10:00 (+14d) |  | 11d → 4d |
| 55 | Definir páginas del sitio | 2014-06-25 09:00 → 2014-07-07 10:00 (+12d) | 2014-06-25 11:00 → 2014-07-07 12:00 (+12d) |  | 10.75d → 4.75d |
| 56 | Construir página principal | 2014-06-26 09:00 → 2014-07-07 10:00 (+11d) | 2014-06-26 19:00 → 2014-07-08 10:00 (+12d) |  | 9d → 4d |
| 57 | Construir página de locales | 2014-06-27 09:00 → 2014-07-07 10:00 (+10d) | 2014-07-03 19:00 → 2014-07-14 10:00 (+11d) |  | 4d → 0d |
| 58 | Construir página de contacto | 2014-07-04 09:00 → 2014-07-07 10:00 (+3d) | 2014-07-04 19:00 → 2014-07-08 10:00 (+4d) |  | 3d → 4d |
| 59 | Prueba integral en navegadores mobile | 2014-07-04 09:00 → 2014-07-07 10:00 (+3d) | 2014-07-04 19:00 → 2014-07-08 10:00 (+4d) |  | 3d → 4d |
| 64 | **Fan page Facebook** | 2014-07-07 09:00 → 2014-07-14 10:00 (+7d) | 2014-07-10 19:00 → 2014-07-15 10:00 (+5d) | 4d? → 1d? |  |
| 65 | Subir Fotos | 2014-07-07 09:00 → 2014-07-14 10:00 (+7d) | 2014-07-07 11:00 → 2014-07-14 12:00 (+7d) |  | 3.75d → 0.75d |
| 66 | Escribir descripción y proposito de fan page | 2014-07-08 09:00 → 2014-07-14 10:00 (+6d) | 2014-07-08 13:00 → 2014-07-14 16:00 (+6d) |  | 2.5d → 0.5d |
| 67 | Comentar a Gonzalo el proposito de la fan page | 2014-07-09 09:00 → 2014-07-14 10:00 (+5d) | 2014-07-09 13:00 → 2014-07-14 16:00 (+5d) |  | 1.5d → 0.5d |
| 68 | Subir promociones | 2014-07-10 09:00 → 2014-07-14 10:00 (+4d) | 2014-07-10 19:00 → 2014-07-15 10:00 (+5d) |  |  |

## Version 5 (saved 2014-07-15)

Note of the change: Actualización de calendario y de puntos pendientes de página de contacto.

Last finish stays 2014-07-17. Complete tasks 13 → 22.

Changed:

| ID | Task | Start | Finish | Duration | Complete | Total float |
| --- | --- | --- | --- | --- | --- | --- |
| 15 | **Construcción de nuevo sitio web desktop** |  |  |  | 6% → 10% |  |
| 22 | **Páginas web principales** |  |  |  | 9% → 33% | 19.88d → 22d |
| 28 | **Contacto** | 2014-06-02 09:00 A | 2014-06-04 10:00 A | 2.12d? → 2.12d | 0% → 100% | 20.88d → none |
| 29 | Definir título | 2014-06-04 09:00 A | 2014-06-04 10:00 A | 1h? → 1h | 0% → 100% | 20.88d → none |
| 30 | Definir descripción | 2014-06-04 09:00 A | 2014-06-04 10:00 A | 1h? → 1h | 0% → 100% | 20.88d → none |
| 31 | Agregar la información que aparece en página ubicación | 2014-06-02 09:00 A | 2014-06-02 11:00 → 2014-06-02 13:00 A | 2h? → 4h | 0% → 100% | 22.75d → none |
| 32 | Actualizar transporte público | 2014-06-02 09:00 A | 2014-06-02 10:00 A | 1h? → 1h | 0% → 100% | 22.88d → none |
| 33 | Agregar link a fan page Facebook | 2014-06-02 09:00 A | 2014-06-02 11:00 → 2014-06-02 10:00 A | 2h? → 1h | 0% → 100% | 22.75d → none |
| 34 | Aclarar horarios de atención al público y de administración | 2014-06-02 09:00 A | 2014-06-02 10:00 A | 1h? → 1h | 0% → 100% | 22.88d → none |
| 50 | **Construcción de nuevo sitio web mobile** | 2014-07-07 10:00 A |  |  | 0% → 10% |  |
| 52 | Definir colores | 2014-07-07 10:00 A | 2014-07-07 12:00 A | 2h? → 2h | 0% → 100% | 4.75d → none |
| 53 | Definir tipo y tamaño de fuente | 2014-07-07 10:00 A | 2014-07-07 12:00 A | 2h? → 2h | 0% → 100% | 4.75d → none |
| 58 | Construir página de contacto | 2014-07-07 10:00 A | 2014-07-08 10:00 → 2014-07-07 16:00 A (-1d) | 8h? → 4h | 0% → 100% | 4d → none |
| 69 | **Tareas Repetitivas** | 2014-05-19 09:00 A |  |  | 0% → 5% | 42d → 44.12d |
| 71 | Probar sitio web en PC | 2014-05-19 09:00 A | 2014-05-19 19:00 → 2014-05-19 10:00 | 8h? → 1h | 0% → 25% | 42d → 45d |
| 72 | Probar sitio web en dispositivos móviles | 2014-05-19 09:00 A | 2014-05-19 19:00 → 2014-05-19 10:00 | 8h? → 1h | 0% → 25% | 42d → 45d |

## Version 6 (saved 2014-07-22)

Note of the change: Creación de página miro.html

Last finish stays 2014-07-17.

Added:

| ID | Task | Duration | Start | Finish | Predecessors | Resources |
| --- | --- | --- | --- | --- | --- | --- |
| 15 | Agregar sitio a Yelp | 8h? | 2014-07-14 10:00 | 2014-07-15 10:00 | 16, 51 | Gustavo |

Changed:

| ID | Task | Complete |
| --- | --- | --- |
| 1 | **Tareas Comunes** | 24% → 21% |

## Version 7 (saved 2014-08-20)

Note of the change: Actualización de calendario

Last finish 2014-07-17 → 2014-09-05 (+50d). Complete tasks 22 → 25.

Added:

| ID | Task | Duration | Start | Finish | Predecessors | Constraint | Resources |
| --- | --- | --- | --- | --- | --- | --- | --- |
| 8 | Corregir la calidad del logo | 1h? | 2014-05-19 09:00 | 2014-05-19 10:00 |  |  | Tamara |
| 17 | Construir los iconos del menu | 3h? | 2014-08-20 09:00 | 2014-08-20 12:00 |  | start no earlier than 2014-08-20 09:00 | Tamara |
| 26 | Construir página | 2h? | 2014-08-21 09:00 | 2014-08-21 11:00 | 25 | start no earlier than 2014-08-21 09:00 | Tamara |
| 34 | Construir página | 8h | 2014-05-19 09:00 A | 2014-05-19 19:00 A |  |  | Gustavo |
| 39 | Construir página | 4h? | 2014-08-20 09:00 | 2014-08-20 13:00 |  | start no earlier than 2014-08-20 09:00 | Gustavo |
| 40 | **Galeria Devoto** | 0.5d? | 2014-08-20 09:00 | 2014-08-20 13:00 |  |  |  |
| 41 | Definir título | 1h? | 2014-08-20 09:00 | 2014-08-20 10:00 |  | start no earlier than 2014-08-20 09:00 | Gustavo; Dani |
| 42 | Definir descripción | 1h? | 2014-08-20 09:00 | 2014-08-20 10:00 |  | start no earlier than 2014-08-20 09:00 | Gustavo; Dani |
| 43 | Construir página | 4h? | 2014-08-20 09:00 | 2014-08-20 13:00 |  | start no earlier than 2014-08-20 09:00 | Gustavo |
| 44 | **Locales** | 2d? | 2014-08-20 09:00 | 2014-08-21 19:00 |  |  |  |
| 45 | Definir título | 1h? | 2014-08-20 09:00 | 2014-08-20 10:00 |  | start no earlier than 2014-08-20 09:00 | Gustavo; Dani |
| 46 | Definir descripción | 1h? | 2014-08-20 09:00 | 2014-08-20 10:00 |  | start no earlier than 2014-08-20 09:00 | Gustavo; Dani |
| 47 | Construir página | 16h? | 2014-08-20 09:00 | 2014-08-21 19:00 |  | start no earlier than 2014-08-20 09:00 | Gustavo |
| 52 | Construir página | 2h? | 2014-08-20 09:00 | 2014-08-20 11:00 |  | start no earlier than 2014-08-20 09:00 | Tamara |
| 61 | Cambiar el tamaño de las imágenes del slider a 640x300 px | 8h? | 2014-05-19 09:00 | 2014-05-19 19:00 |  |  | Tamara |
| 74 | **Iteración 2** | 5d? | 2014-09-01 09:00 | 2014-09-05 19:00 | 69 |  |  |
| 79 | Mejorar la velocidad de descarga de la página de contacto | 8h? | 2014-09-01 09:00 | 2014-09-01 19:00 |  |  | Gustavo |
| 80 | Completar páginas de cada local | 40h? | 2014-09-01 09:00 | 2014-09-05 19:00 |  |  | Gustavo |

Removed: 52 Realizar boceto de sitio web en programa de diseño gráfico; 53 Definir colores; 54 Definir tipo y tamaño de fuente; 55 Definir estructura del sitio; 56 Definir páginas del sitio; 57 Construir página principal; 58 Construir página de locales; 59 Construir página de contacto; 70 Tareas Repetitivas; 72 Probar sitio web en PC; 73 Probar sitio web en dispositivos móviles

Changed:

| ID | Task | Start | Finish | Duration | Complete | Total float | Predecessors | Other |
| --- | --- | --- | --- | --- | --- | --- | --- | --- |
| 1 | **Tareas Comunes** |  | 2014-07-17 10:00 → 2014-09-02 19:00 (+47d) | 45.12d? → 79d? | 21% → 34% | 0d → 3d |  |  |
| 4 | Sacar fotos de galería |  | 2014-05-28 18:00 A | 4h? → 4h | 50% → 100% | 35.12d → none |  |  |
| 9 | Prueba UAT (Aceptación de usuario) | 2014-07-15 10:00 → 2014-09-01 09:00 (+48d) | 2014-07-17 10:00 → 2014-09-02 19:00 (+47d) |  |  | 0d → 3d |  |  |
| 10 | Tomar snapshot de indicadores KPI (sitio web viejo) | 2014-06-20 09:00 → 2014-08-28 09:00 (+69d) | 2014-06-20 13:00 → 2014-08-28 13:00 (+69d) |  |  | 16.5d → 5.5d | 53, 20 → 12 | was named Tomar snapshot de indicadores (sitio web viejo) |
| 11 | Actualizar documento de SEO | 2014-05-19 09:00 → 2014-08-28 15:00 (+101d) | 2014-05-19 19:00 → 2014-08-29 13:00 (+102d) |  |  | 42d → 5.5d | none → 10 |  |
| 12 | **Construcción de nuevo sitio web desktop** | 2014-05-26 09:00 A → 2014-05-19 09:00 A (-7d) | 2014-07-07 10:00 → 2014-08-27 19:00 (+51d) | 32.12d? → 75d? | 10% → 23% |  |  |  |
| 15 | Definir tipo y tamaño de fuente |  | 2014-05-28 10:00 A |  | 50% → 100% | 30d → none |  |  |
| 18 | Construir un icono (favicon) | 2014-07-07 09:00 → 2014-08-20 09:00 (+44d) | 2014-07-07 10:00 → 2014-08-20 10:00 (+44d) |  |  | 0d → 5.88d |  | constraint start no earlier than 2014-07-07 09:00 → start no earlier than 2014-08-20 09:00 |
| 19 | Prueba integral en navegadores | 2014-06-20 09:00 → 2014-08-27 09:00 (+68d) | 2014-06-20 19:00 → 2014-08-27 19:00 (+68d) |  |  | 10.12d → 0d |  |  |
| 20 | **Páginas web principales** | 2014-05-30 09:00 A → 2014-05-19 09:00 A (-11d) | 2014-06-05 10:00 → 2014-08-21 19:00 (+77d) | 5.12d? → 71d? | 33% → 31% | 22d → 3d |  |  |
| 21 | **Home** | 2014-05-30 09:00 A → 2014-05-31 09:00 A (+1d) | 2014-06-03 19:00 → 2014-08-21 11:00 (+79d) | 4d? → 60.25d? | 23% → 64% | 23.12d → 3.75d |  |  |
| 22 | Definir título | 2014-05-30 09:00 → 2014-08-20 09:00 (+82d) | 2014-05-30 10:00 → 2014-08-20 10:00 (+82d) |  |  | 27d → 4.88d |  | constraint start no earlier than 2014-05-30 09:00 → start no earlier than 2014-08-20 09:00; resources Gustavo; Tamara; Dani → Gustavo; Dani |
| 23 | Definir descripción | 2014-05-30 09:00 → 2014-08-20 09:00 (+82d) | 2014-05-30 10:00 → 2014-08-20 10:00 (+82d) |  |  | 27d → 4.88d |  | constraint start no earlier than 2014-05-30 09:00 → start no earlier than 2014-08-20 09:00; resources Gustavo; Tamara; Dani → Gustavo; Dani |
| 25 | Construir MasterPage Principal | 2014-06-03 09:00 A | 2014-06-03 19:00 → 2014-06-03 13:00 A | 8h? → 4h | 0% → 100% | 23.12d → none |  |  |
| 27 | **Contacto** | 2014-06-02 09:00 A → 2014-05-19 09:00 A (-14d) |  | 2.12d → 13.12d |  |  |  |  |
| 28 | Definir título |  |  |  |  |  |  | resources Gustavo; Tamara; Dani → Gustavo; Dani |
| 29 | Definir descripción |  |  |  |  |  |  | resources Gustavo; Tamara; Dani → Gustavo; Dani |
| 30 | Agregar la información que aparece en página ubicación |  | 2014-06-02 13:00 A → 2014-06-02 11:00 A | 4h → 2h |  |  |  | resources Tamara → Gustavo |
| 31 | Actualizar transporte público |  |  |  |  |  |  | resources Tamara → Gustavo |
| 32 | Agregar link a fan page Facebook |  |  |  |  |  |  | resources Tamara → Gustavo |
| 33 | Aclarar horarios de atención al público y de administración |  |  |  |  |  |  | resources Tamara → Gustavo |
| 35 | **Villa Devoto** | 2014-06-03 09:00 → 2014-08-20 09:00 (+78d) | 2014-06-05 10:00 → 2014-08-20 13:00 (+76d) | 2.12d? → 0.5d? |  | 22d → 4.5d |  |  |
| 36 | Definir título | 2014-06-05 09:00 → 2014-08-20 09:00 (+76d) | 2014-06-05 10:00 → 2014-08-20 10:00 (+76d) |  |  | 22d → 4.88d |  | constraint start no earlier than 2014-06-05 09:00 → start no earlier than 2014-08-20 09:00; resources Gustavo; Tamara; Dani → Gustavo; Dani |
| 37 | Definir descripción | 2014-06-05 09:00 → 2014-08-20 09:00 (+76d) | 2014-06-05 10:00 → 2014-08-20 10:00 (+76d) |  |  | 22d → 4.88d |  | constraint start no earlier than 2014-06-05 09:00 → start no earlier than 2014-08-20 09:00; resources Gustavo; Tamara; Dani → Gustavo; Dani |
| 38 | Agregar direcciones de los lugares | 2014-06-03 09:00 → 2014-08-20 09:00 (+78d) | 2014-06-03 13:00 → 2014-08-20 13:00 (+78d) |  |  | 23.62d → 4.5d |  | constraint start no earlier than 2014-06-03 09:00 → start no earlier than 2014-08-20 09:00; resources Tamara → Gustavo |
| 48 | **Error 404 (Not Found)** | 2014-06-04 09:00 → 2014-08-20 09:00 (+77d) | 2014-06-04 13:00 → 2014-08-20 13:00 (+77d) |  |  | 22.62d → 4.5d |  |  |
| 49 | Definir estructura | 2014-06-04 09:00 → 2014-08-20 09:00 (+77d) | 2014-06-04 13:00 → 2014-08-20 13:00 (+77d) |  |  | 22.62d → 4.5d |  | constraint start no earlier than 2014-06-04 09:00 → start no earlier than 2014-08-20 09:00 |
| 50 | Definir imagen | 2014-06-04 09:00 → 2014-08-20 09:00 (+77d) | 2014-06-04 11:00 → 2014-08-20 11:00 (+77d) |  |  | 22.88d → 4.75d |  | constraint start no earlier than 2014-06-04 09:00 → start no earlier than 2014-08-20 09:00 |
| 51 | Definir texto | 2014-06-04 09:00 → 2014-08-20 09:00 (+77d) | 2014-06-04 11:00 → 2014-08-20 11:00 (+77d) |  |  | 22.88d → 4.75d |  | constraint start no earlier than 2014-06-04 09:00 → start no earlier than 2014-08-20 09:00 |
| 53 | **Página de cada local** | 2014-06-05 09:00 A → 2014-05-19 09:00 A (-17d) | 2014-06-19 19:00 → 2014-08-26 19:00 (+68d) | 12d? → 74d? | 2% → 16% | 10.12d → 0d |  | was named Páginas de locales |
| 54 | Obtener descripción detallada del local |  |  |  |  | 42.25d → 73.25d |  | was named Obtener descripción detallada de locales |
| 56 | Definir título | 2014-06-07 09:00 → 2014-08-20 09:00 (+74d) | 2014-06-12 19:00 → 2014-08-26 19:00 (+75d) |  |  | 15.12d → 0d |  | was named Definir títulos; constraint start no earlier than 2014-06-07 09:00 → start no earlier than 2014-08-20 09:00 |
| 57 | Definir descripción | 2014-06-07 09:00 → 2014-08-20 09:00 (+74d) | 2014-06-12 19:00 → 2014-08-26 19:00 (+75d) |  |  | 15.12d → 0d |  | was named Definir descripciones; constraint start no earlier than 2014-06-07 09:00 → start no earlier than 2014-08-20 09:00 |
| 59 | Construir MasterPage Local | 2014-06-06 09:00 A | 2014-06-06 19:00 → 2014-06-06 13:00 A | 8h? → 4h | 0% → 100% | 10.12d → none |  |  |
| 60 | Buscar un slider de imágenes y aprender a usarlo | 2014-06-07 09:00 A | 2014-06-07 19:00 A | 8h? → 8h | 0% → 100% | 19.12d → none |  |  |
| 62 | Construir páginas | 2014-06-07 09:00 → 2014-08-20 09:00 A (+74d) | 2014-06-19 19:00 → 2014-08-20 13:00 (+62d) | 80h? → 4h | 0% → 25% | 10.12d → 4.5d |  |  |
| 63 | **Construcción de nuevo sitio web mobile** | 2014-07-07 10:00 A → 2014-08-28 09:00 (+52d) | 2014-07-14 10:00 → 2014-08-28 19:00 (+45d) | 5d? → 1d? | 10% → 0% |  |  |  |
| 64 | Prueba integral en navegadores mobile | 2014-07-07 10:00 → 2014-08-28 09:00 (+52d) | 2014-07-08 10:00 → 2014-08-28 19:00 (+51d) |  |  | 4d → 0d |  | resources Gustavo → Gustavo; Tamara; Miriam |
| 69 | **Fan page Facebook** | 2014-07-14 10:00 → 2014-08-29 09:00 (+46d) | 2014-07-15 10:00 → 2014-08-29 19:00 (+45d) |  |  |  |  |  |
| 70 | Subir Fotos | 2014-07-14 10:00 → 2014-08-29 09:00 (+46d) | 2014-07-14 12:00 → 2014-08-29 11:00 (+46d) |  |  |  |  |  |
| 71 | Escribir descripción y proposito de fan page | 2014-07-14 10:00 → 2014-08-29 09:00 (+46d) | 2014-07-14 16:00 → 2014-08-29 13:00 (+46d) |  |  |  |  |  |
| 72 | Comentar a Gonzalo el proposito de la fan page | 2014-07-14 10:00 → 2014-08-29 09:00 (+46d) | 2014-07-14 16:00 → 2014-08-29 13:00 (+46d) |  |  |  |  |  |
| 73 | Subir promociones | 2014-07-14 10:00 → 2014-08-29 09:00 (+46d) | 2014-07-15 10:00 → 2014-08-29 19:00 (+45d) |  |  |  |  |  |
| 75 | Validar código HTML | 2014-07-14 10:00 → 2014-09-01 09:00 (+49d) | 2014-07-15 10:00 → 2014-09-01 19:00 (+48d) |  |  | 1.5d → 3.5d |  |  |
| 76 | Validar código CSS | 2014-07-14 10:00 → 2014-09-01 09:00 (+49d) | 2014-07-15 10:00 → 2014-09-01 19:00 (+48d) |  |  | 1.5d → 3.5d |  |  |
| 77 | Agregar validaciones HTML y CSS exitosas al sitio web | 2014-07-15 10:00 → 2014-09-02 09:00 (+49d) | 2014-07-15 16:00 → 2014-09-02 13:00 (+49d) |  |  | 1.5d → 3.5d |  |  |
| 78 | Agregar sitio a Yelp | 2014-07-14 10:00 → 2014-09-01 09:00 (+49d) | 2014-07-15 10:00 → 2014-09-01 19:00 (+48d) |  |  | 2d → 4d |  |  |

## Version 8 (saved 2014-09-04)

Note of the change: Agregado de página villadevoto.aspx

Last finish stays 2014-09-05. Complete tasks 25 → 29.

Added:

| ID | Task | Duration | Start | Finish | Resources |
| --- | --- | --- | --- | --- | --- |
| 9 | Agregar Google Analytics en páginas que corresponde | 8h? | 2014-05-19 09:00 | 2014-05-19 19:00 | Gustavo |
| 10 | Configurar redireccionamientos permanentes | 8h? | 2014-05-19 09:00 | 2014-05-19 19:00 | Gustavo |

Changed:

| ID | Task | Start | Finish | Duration | Complete | Total float |
| --- | --- | --- | --- | --- | --- | --- |
| 1 | **Tareas Comunes** |  |  |  | 34% → 27% |  |
| 8 | Corregir la calidad del logo | 2014-05-19 09:00 A | 2014-05-19 10:00 A | 1h? → 1h | 0% → 100% | 81.88d → none |
| 14 | **Construcción de nuevo sitio web desktop** |  |  |  | 23% → 40% |  |
| 19 | Construir los iconos del menu | 2014-08-20 09:00 A | 2014-08-20 12:00 A | 3h? → 3h | 0% → 100% | 5.62d → none |
| 22 | **Páginas web principales** |  |  |  | 31% → 62% |  |
| 23 | **Home** |  |  |  | 64% → 73% |  |
| 28 | Construir página | 2014-08-21 09:00 A |  | 2h? → 2h | 0% → 50% |  |
| 29 | **Contacto** |  | 2014-06-04 10:00 A → 2014-06-04 10:00 |  | 100% → 87% | none → 60.88d |
| 30 | Definir título | 2014-06-04 09:00 A → 2014-06-04 09:00 | 2014-06-04 10:00 A → 2014-06-04 10:00 |  | 100% → 0% | none → 60.88d |
| 31 | Definir descripción | 2014-06-04 09:00 A → 2014-06-04 09:00 | 2014-06-04 10:00 A → 2014-06-04 10:00 |  | 100% → 0% | none → 60.88d |
| 37 | **Villa Devoto** | 2014-08-20 09:00 A |  |  | 0% → 25% |  |
| 41 | Construir página | 2014-08-20 09:00 A | 2014-08-20 13:00 → 2014-08-20 11:00 A | 4h? → 2h | 0% → 100% | 4.5d → none |
| 42 | **Galeria Devoto** | 2014-08-20 09:00 A | 2014-08-20 13:00 → 2014-08-20 11:00 | 0.5d? → 0.25d? | 0% → 50% | 4.5d → 4.75d |
| 45 | Construir página | 2014-08-20 09:00 A | 2014-08-20 13:00 → 2014-08-20 11:00 A | 4h? → 2h | 0% → 100% | 4.5d → none |
| 46 | **Locales** | 2014-08-20 09:00 A |  |  | 0% → 89% |  |
| 49 | Construir página | 2014-08-20 09:00 A | 2014-08-21 19:00 A | 16h? → 16h | 0% → 100% | 3d → none |
| 55 | **Página de cada local** |  |  |  | 16% → 26% |  |
| 63 | Cambiar el tamaño de las imágenes del slider a 640x300 px | 2014-05-19 09:00 A | 2014-05-19 19:00 A | 8h? → 8h | 0% → 100% | 73d → none |
| 64 | Construir páginas |  | 2014-08-20 13:00 → 2014-08-21 19:00 (+1d) | 4h → 16h | 25% → 50% | 4.5d → 3d |

## Version 9 (saved 2014-10-18)

Note of the change: Agregado de google analytics Configuracion de mail para produccion Agregado de redireccionamientos permanentes

Last finish stays 2014-09-05. Complete tasks 29 → 48.

Added:

| ID | Task | Duration | Start | Finish | Resources |
| --- | --- | --- | --- | --- | --- |
| 83 | Agregar los locales relacionados en la página de cada local | 8h? | 2014-08-29 15:00 | 2014-09-01 13:00 | Gustavo; Tamara |

Changed:

| ID | Task | Start | Finish | Duration | Complete | Total float |
| --- | --- | --- | --- | --- | --- | --- |
| 1 | **Tareas Comunes** |  | 2014-09-02 19:00 → 2014-09-02 13:00 | 79d? → 78.5d? | 27% → 36% |  |
| 9 | Agregar Google Analytics en páginas que corresponde | 2014-05-19 09:00 A | 2014-05-19 19:00 → 2014-05-19 10:00 A | 8h? → 1h | 0% → 100% | 81d → none |
| 11 | Prueba UAT (Aceptación de usuario) | 2014-09-01 09:00 → 2014-08-29 15:00 (-3d) | 2014-09-02 19:00 → 2014-09-02 13:00 |  |  |  |
| 12 | Tomar snapshot de indicadores KPI (sitio web viejo) | 2014-08-28 09:00 A | 2014-08-28 13:00 → 2014-08-28 10:00 A | 4h? → 1h | 0% → 100% | 5.5d → none |
| 13 | Actualizar documento de SEO | 2014-08-28 15:00 → 2014-08-28 10:00 | 2014-08-29 13:00 → 2014-08-29 10:00 |  |  | 5.5d → 5.38d |
| 14 | **Construcción de nuevo sitio web desktop** |  |  |  | 40% → 67% | 0d → 4.5d |
| 20 | Construir un icono (favicon) | 2014-08-20 09:00 A | 2014-08-20 10:00 A | 1h? → 1h | 0% → 100% | 5.88d → none |
| 22 | **Páginas web principales** |  |  |  | 62% → 83% | 3d → 7.5d |
| 23 | **Home** |  |  | 60.25d? → 60.25d | 73% → 91% |  |
| 24 | Definir título | 2014-08-20 09:00 A | 2014-08-20 10:00 A | 1h? → 1h | 0% → 100% | 4.88d → none |
| 25 | Definir descripción | 2014-08-20 09:00 A | 2014-08-20 10:00 A | 1h? → 1h | 0% → 100% | 4.88d → none |
| 29 | **Contacto** |  | 2014-06-04 10:00 A |  | 87% → 100% | 60.88d → none |
| 30 | Definir título | 2014-06-04 09:00 A | 2014-06-04 10:00 A |  | 0% → 100% | 60.88d → none |
| 31 | Definir descripción | 2014-06-04 09:00 A | 2014-06-04 10:00 A |  | 0% → 100% | 60.88d → none |
| 37 | **Villa Devoto** |  | 2014-08-20 13:00 A | 0.5d? → 0.5d | 25% → 100% | 4.5d → none |
| 38 | Definir título | 2014-08-20 09:00 A | 2014-08-20 10:00 A | 1h? → 1h | 0% → 100% | 4.88d → none |
| 39 | Definir descripción | 2014-08-20 09:00 A | 2014-08-20 10:00 A | 1h? → 1h | 0% → 100% | 4.88d → none |
| 40 | Agregar direcciones de los lugares | 2014-08-20 09:00 A | 2014-08-20 13:00 A | 4h? → 4h | 0% → 100% | 4.5d → none |
| 42 | **Galeria Devoto** |  | 2014-08-20 11:00 A | 0.25d? → 0.25d | 50% → 100% | 4.75d → none |
| 43 | Definir título | 2014-08-20 09:00 A | 2014-08-20 10:00 A | 1h? → 1h | 0% → 100% | 4.88d → none |
| 44 | Definir descripción | 2014-08-20 09:00 A | 2014-08-20 10:00 A | 1h? → 1h | 0% → 100% | 4.88d → none |
| 46 | **Locales** |  | 2014-08-21 19:00 A | 2d? → 2d | 89% → 100% | 3d → none |
| 47 | Definir título | 2014-08-20 09:00 A | 2014-08-20 10:00 A | 1h? → 1h | 0% → 100% | 4.88d → none |
| 48 | Definir descripción | 2014-08-20 09:00 A | 2014-08-20 10:00 A | 1h? → 1h | 0% → 100% | 4.88d → none |
| 55 | **Página de cada local** |  |  |  | 26% → 59% | 0d → 4.5d |
| 56 | Obtener descripción detallada del local |  | 2014-05-19 17:00 → 2014-05-23 19:00 A (+4d) | 6h → 40h | 25% → 100% | 73.25d → none |
| 57 | Obtener productos promocionados por local |  |  | 6h → 6h? |  | 73.25d → 77.75d |
| 58 | Definir título | 2014-08-20 09:00 A | 2014-08-26 19:00 → 2014-08-20 13:00 A (-6d) | 40h? → 4h | 0% → 100% | 0d → none |
| 65 | **Construcción de nuevo sitio web mobile** | 2014-08-28 09:00 A | 2014-08-28 19:00 → 2014-08-28 13:00 A | 1d? → 0.5d | 0% → 100% | 0d → none |
| 66 | Prueba integral en navegadores mobile | 2014-08-28 09:00 A | 2014-08-28 19:00 → 2014-08-28 13:00 A | 8h? → 4h | 0% → 100% | 0d → none |
| 71 | **Fan page Facebook** | 2014-08-29 09:00 → 2014-08-28 15:00 A (-1d) | 2014-08-29 19:00 → 2014-08-29 13:00 |  | 0% → 14% |  |
| 72 | Subir Fotos | 2014-08-29 09:00 → 2014-08-28 15:00 A (-1d) | 2014-08-29 11:00 → 2014-08-28 16:00 A (-1d) | 2h? → 1h | 0% → 100% | 0.75d → none |
| 73 | Escribir descripción y proposito de fan page | 2014-08-29 09:00 → 2014-08-28 15:00 A (-1d) | 2014-08-29 13:00 → 2014-08-28 16:00 A (-1d) | 4h? → 1h | 0% → 100% | 0.5d → none |
| 74 | Comentar a Gonzalo el proposito de la fan page | 2014-08-29 09:00 → 2014-08-28 15:00 (-1d) | 2014-08-29 13:00 → 2014-08-28 19:00 (-1d) |  |  |  |
| 75 | Subir promociones | 2014-08-29 09:00 → 2014-08-28 15:00 (-1d) | 2014-08-29 19:00 → 2014-08-29 13:00 |  |  |  |
| 76 | **Iteración 2** | 2014-09-01 09:00 → 2014-08-29 15:00 (-3d) | 2014-09-05 19:00 → 2014-09-05 13:00 |  |  |  |
| 77 | Validar código HTML | 2014-09-01 09:00 → 2014-08-29 15:00 (-3d) | 2014-09-01 19:00 → 2014-09-01 13:00 |  |  |  |
| 78 | Validar código CSS | 2014-09-01 09:00 → 2014-08-29 15:00 (-3d) | 2014-09-01 19:00 → 2014-09-01 13:00 |  |  |  |
| 79 | Agregar validaciones HTML y CSS exitosas al sitio web | 2014-09-02 09:00 → 2014-09-01 15:00 (-1d) | 2014-09-02 13:00 → 2014-09-01 19:00 (-1d) |  |  |  |
| 80 | Agregar sitio a Yelp | 2014-09-01 09:00 → 2014-08-29 15:00 (-3d) | 2014-09-01 19:00 → 2014-09-01 13:00 |  |  |  |
| 81 | Mejorar la velocidad de descarga de la página de contacto | 2014-09-01 09:00 → 2014-08-29 15:00 (-3d) | 2014-09-01 19:00 → 2014-09-01 13:00 |  |  |  |
| 82 | Completar páginas de cada local | 2014-09-01 09:00 → 2014-08-29 15:00 (-3d) | 2014-09-05 19:00 → 2014-09-05 13:00 |  |  |  |

## Version 10 (saved 2014-11-23)

Note of the change: Actualizacion de calendario

Last finish 2014-09-05 → 2015-04-03 (+210d). Complete tasks 48 → 55.

Added:

| ID | Task | Duration | Start | Finish | Constraint | Resources |
| --- | --- | --- | --- | --- | --- | --- |
| 74 | Agregar código postal a la página de contacto | 8h? | 2014-12-01 09:00 | 2014-12-01 19:00 | start no earlier than 2014-12-01 09:00 | Tamara |
| 75 | Eliminar codigo JavaScript y CSS no utilizado | 8h? | 2015-03-02 09:00 | 2015-03-02 19:00 | start no earlier than 2015-03-02 09:00 | Gustavo |
| 76 | **Locales** | 65d? | 2015-01-05 09:00 | 2015-04-03 19:00 |  |  |
| 80 | Definir meta description de cada local | 40h? | 2015-03-23 09:00 | 2015-03-27 19:00 | start no earlier than 2015-03-23 09:00 | Gustavo; Tamara; Dani |
| 81 | Agregar el listado alfabetico de locales | 8h? | 2015-03-16 09:00 | 2015-03-16 19:00 | start no earlier than 2015-03-16 09:00 | Gustavo |
| 82 | Agregar secciones "Productos" y "Medios de pago" | 40h? | 2015-03-30 09:00 | 2015-04-03 19:00 | start no earlier than 2015-03-30 09:00 | Gustavo; Tamara |
| 83 | Subir promociones a Facebook | 8h? | 2015-01-05 09:00 | 2015-01-05 19:00 | start no earlier than 2015-01-05 09:00 | Gonzalo; Tamara |

Removed: 59 Definir descripción; 75 Subir promociones

Changed:

| ID | Task | Start | Finish | Duration | Complete | Total float | Predecessors | Other |
| --- | --- | --- | --- | --- | --- | --- | --- | --- |
| 1 | **Iteración 1** |  | 2014-09-02 13:00 → 2014-08-29 16:00 A (-4d) | 78.5d? → 76.62d | 36% → 100% | 3d → none |  | was named Tareas Comunes |
| 10 | Configurar redireccionamientos permanentes | 2014-05-19 09:00 A | 2014-05-19 19:00 → 2014-05-19 11:00 A | 8h? → 2h | 0% → 100% | 81d → none |  |  |
| 11 | Prueba UAT (Aceptación de usuario) | 2014-08-29 15:00 A | 2014-09-02 13:00 → 2014-08-29 16:00 A (-4d) | 16h? → 1h | 0% → 100% | 3d → none |  |  |
| 13 | Actualizar documento de SEO | 2014-08-28 10:00 A | 2014-08-29 10:00 → 2014-08-28 11:00 A (-1d) | 8h? → 1h | 0% → 100% | 5.38d → none |  |  |
| 14 | **Construcción de nuevo sitio web desktop** |  | 2014-08-27 19:00 A | 75d? → 75d | 67% → 100% | 4.5d → none |  |  |
| 21 | Prueba integral en navegadores | 2014-08-27 09:00 A | 2014-08-27 19:00 A | 8h? → 8h | 0% → 100% | 4.5d → none |  |  |
| 22 | **Páginas web principales** |  | 2014-08-21 19:00 A | 71d? → 71d | 83% → 100% | 7.5d → none |  |  |
| 23 | **Home** |  | 2014-08-21 11:00 → 2014-08-21 13:00 A | 60.25d → 60.5d | 91% → 100% | 3.75d → none |  |  |
| 28 | Construir página |  | 2014-08-21 11:00 → 2014-08-21 13:00 A | 2h → 4h | 50% → 100% | 3.75d → none |  |  |
| 50 | **Página de cada local** |  | 2014-08-26 19:00 → 2014-08-27 11:00 A (+1d) | 74d? → 74.25d | 59% → 100% | 4.5d → none |  |  |
| 57 | Construir páginas |  | 2014-08-21 19:00 → 2014-08-27 11:00 A (+6d) | 16h → 42h | 50% → 100% | 3d → none |  |  |
| 64 | **Fan page Facebook** |  | 2014-08-29 13:00 → 2014-08-28 17:00 A (-1d) | 1d? → 0.25d | 14% → 100% | 0d → none |  |  |
| 67 | Comentar a Gonzalo el proposito de la fan page | 2014-08-28 15:00 A | 2014-08-28 19:00 → 2014-08-28 17:00 A | 4h? → 2h | 0% → 100% | 0.5d → none |  |  |
| 68 | **Iteración 2** | 2014-08-29 15:00 → 2014-12-01 09:00 (+94d) | 2014-09-05 13:00 → 2015-04-03 19:00 (+210d) | 5d? → 90d? |  |  |  |  |
| 69 | Validar código HTML | 2014-08-29 15:00 → 2015-01-05 09:00 (+129d) | 2014-09-01 13:00 → 2015-01-05 19:00 (+126d) |  |  | 3.5d → 63.5d | 14, 58 → none | constraint start no earlier than 2014-05-21 09:00 → start no earlier than 2015-01-05 09:00 |
| 70 | Validar código CSS | 2014-08-29 15:00 → 2015-01-12 09:00 (+136d) | 2014-09-01 13:00 → 2015-01-12 19:00 (+133d) |  |  | 3.5d → 58.5d | 14, 58 → none | constraint start no earlier than 2014-05-21 09:00 → start no earlier than 2015-01-12 09:00 |
| 71 | Agregar validaciones HTML y CSS exitosas al sitio web | 2014-09-01 15:00 → 2015-01-19 09:00 (+140d) | 2014-09-01 19:00 → 2015-01-19 13:00 (+140d) |  |  | 3.5d → 54.5d |  | constraint start no earlier than 2014-05-21 09:00 → start no earlier than 2015-01-19 09:00; resources Gustavo → Tamara |
| 72 | Agregar sitio a Yelp | 2014-08-29 15:00 → 2015-01-26 09:00 (+150d) | 2014-09-01 13:00 → 2015-01-26 19:00 (+147d) |  |  | 4d → 49d | 14, 58 → 58 | constraint none → start no earlier than 2015-01-26 09:00 |
| 73 | Mejorar la velocidad de descarga de la página de contacto | 2014-08-29 15:00 → 2015-03-02 09:00 (+185d) | 2014-09-01 13:00 → 2015-03-02 19:00 (+182d) |  |  | 4d → 24d |  | constraint none → start no earlier than 2015-03-02 09:00 |
| 77 | Completar páginas de cada local | 2014-08-29 15:00 → 2015-03-09 09:00 (+192d) | 2014-09-05 13:00 → 2015-03-13 19:00 (+189d) |  |  | 0d → 15d |  | constraint none → start no earlier than 2015-03-09 09:00 |
| 78 | Agregar los locales relacionados en la página de cada local | 2014-08-29 15:00 → 2015-03-09 09:00 (+192d) | 2014-09-01 13:00 → 2015-03-09 19:00 (+189d) |  |  | 4d → 19d |  | constraint none → start no earlier than 2015-03-09 09:00 |
| 79 | Obtener productos promocionados por local | 2014-05-19 09:00 A → 2015-01-05 09:00 (+231d) | 2014-05-19 17:00 → 2015-01-09 19:00 (+235d) | 6h? → 40h? | 25% → 0% | 77.75d → 60d |  | constraint none → start no earlier than 2015-01-05 09:00 |
| 84 | **Error 404 (Not Found)** | 2014-08-20 09:00 → 2015-01-05 09:00 (+138d) | 2014-08-20 13:00 → 2015-01-05 17:00 (+138d) | 0.5d? → 0.75d? |  | 4.5d → 64.25d |  |  |
| 85 | Definir estructura | 2014-08-20 09:00 → 2015-01-05 09:00 (+138d) | 2014-08-20 13:00 → 2015-01-05 13:00 (+138d) |  |  | 4.5d → 64.25d |  | constraint start no earlier than 2014-08-20 09:00 → start no earlier than 2015-01-05 09:00 |
| 86 | Definir imagen | 2014-08-20 09:00 → 2015-01-05 09:00 (+138d) | 2014-08-20 11:00 → 2015-01-05 11:00 (+138d) |  |  | 4.75d → 64.5d |  | constraint start no earlier than 2014-08-20 09:00 → start no earlier than 2015-01-05 09:00 |
| 87 | Definir texto | 2014-08-20 09:00 → 2015-01-05 09:00 (+138d) | 2014-08-20 11:00 → 2015-01-05 11:00 (+138d) |  |  | 4.75d → 64.5d |  | constraint start no earlier than 2014-08-20 09:00 → start no earlier than 2015-01-05 09:00 |
| 88 | Construir página | 2014-08-20 09:00 → 2015-01-05 15:00 (+138d) | 2014-08-20 11:00 → 2015-01-05 17:00 (+138d) |  |  | 4.75d → 64.25d | none → 85, 86, 87 | constraint start no earlier than 2014-08-20 09:00 → start no earlier than 2015-01-05 09:00 |

## Version 11 (saved 2014-11-24)

Note of the change: Actualizacion de calendario

Last finish stays 2015-04-03.

Added:

| ID | Task | Duration | Start | Finish | Constraint | Resources |
| --- | --- | --- | --- | --- | --- | --- |
| 76 | Revisión de estadísticas y KPIs | 8h? | 2015-01-05 09:00 | 2015-01-05 19:00 | start no earlier than 2015-01-05 09:00 | Gustavo |

Changed:

| ID | Task | Predecessors |
| --- | --- | --- |
| 68 | **Iteración 2** | 64 → 1, 64 |

## Version 12 (saved 2014-12-02)

Note of the change: Actualizacion de calendario

Last finish stays 2015-04-03.

Added:

| ID | Task | Duration | Start | Finish | Constraint | Resources |
| --- | --- | --- | --- | --- | --- | --- |
| 75 | Agregar Captcha a la página de contacto | 8h? | 2015-04-01 09:00 | 2015-04-01 19:00 | start no earlier than 2015-04-01 09:00 | Gustavo |
