# GaleriaDevoto-SitioWeb-2014

How a schedule from MS Project changed from version to version. A marks actual dates.

## Version 1 (saved 2014-05-22)

Note of the change: Creación de tareas del proyecto.

| ID | WBS | Task | Duration | Start | Finish | Predecessors | Complete | Total float | Constraint |
| --- | --- | --- | --- | --- | --- | --- | --- | --- | --- |
| 1 | 1 | **Tareas Comunes** | 43d | 2014-05-19 09:00 A | 2014-07-14 19:00 |  | 1% | 0d |  |
| 2 |  | Obtener listado completo de locales | 2h | 2014-05-19 09:00 A | 2014-05-19 11:00 A |  | 100% |  | start no earlier than 2014-05-19 09:00 |
| 3 |  | Sacar fotos de locales | 4h | 2014-05-28 12:00 | 2014-05-28 18:00 |  |  | 35.12d | finish no earlier than 2014-05-28 18:00 |
| 4 |  | Sacar fotos de galería | 4h | 2014-05-28 12:00 | 2014-05-28 18:00 |  |  | 35.12d | finish no earlier than 2014-05-28 18:00 |
| 5 |  | Tomar snapshot de indicadores (sitio web viejo) | 4h | 2014-06-20 09:00 | 2014-06-20 13:00 | 41, 20 |  | 16.5d | start no earlier than 2014-05-21 09:00 |
| 6 |  | Configurar el control de código | 4h | 2014-05-23 09:00 | 2014-05-23 13:00 |  |  | 38.5d | start no earlier than 2014-05-23 09:00 |
| 7 |  | Detectar user agent con asp.net y redirigir a sitio correcto | 8h | 2014-05-27 09:00 | 2014-05-27 19:00 |  |  | 36d | start no earlier than 2014-05-27 09:00 |
| 8 |  | Validar código HTML | 8h | 2014-07-07 09:00 | 2014-07-07 19:00 | 14, 48 |  | 4.5d | start no earlier than 2014-05-21 09:00 |
| 9 |  | Validar código CSS | 8h | 2014-07-07 09:00 | 2014-07-07 19:00 | 14, 48 |  | 4.5d | start no earlier than 2014-05-21 09:00 |
| 10 |  | Agregar validaciones HTML y CSS exitosas al sitio web | 4h | 2014-07-08 09:00 | 2014-07-08 13:00 | 8, 9 |  | 4.5d | start no earlier than 2014-05-21 09:00 |
| 11 |  | Obtener descripción detallada de locales | 40h | 2014-05-19 09:00 | 2014-05-23 19:00 |  |  | 38d |  |
| 12 |  | Obtener productos promocionados por local | 40h | 2014-05-19 09:00 | 2014-05-23 19:00 |  |  | 38d |  |
| 13 |  | Prueba UAT (Aceptación de usuario) | 16h | 2014-07-11 09:00 | 2014-07-14 19:00 | 14, 48, 58, 61 |  | 0d |  |
| 14 | 2 | **Construcción de nuevo sitio web desktop** | 22d | 2014-05-26 09:00 | 2014-06-20 19:00 |  |  | 8d |  |
| 15 |  | Realizar boceto de sitio web en programa de diseño gráfico | 8h | 2014-05-26 09:00 | 2014-05-26 19:00 |  |  | 29d | start no earlier than 2014-05-26 09:00 |
| 16 |  | Definir colores | 2h | 2014-05-27 09:00 | 2014-05-27 11:00 |  |  | 28.75d | start no earlier than 2014-05-27 09:00 |
| 17 |  | Definir tipo y tamaño de fuente | 2h | 2014-05-28 09:00 | 2014-05-28 11:00 |  |  | 27.75d | start no earlier than 2014-05-28 09:00 |
| 18 |  | Definir resolución mínima sin scroll | 2h | 2014-05-29 09:00 | 2014-05-29 11:00 |  |  | 26.75d | start no earlier than 2014-05-29 09:00 |
| 19 |  | Prueba integral en navegadores | 8h | 2014-06-20 09:00 | 2014-06-20 19:00 | 20, 41 |  | 8d |  |
| 20 | 2.6 | **Páginas web principales** | 5.12d | 2014-05-30 09:00 | 2014-06-05 10:00 |  |  | 19.88d |  |
| 21 | 2.6.1 | **Home** | 4d | 2014-05-30 09:00 | 2014-06-03 19:00 |  |  | 21d |  |
| 22 |  | Definir título | 1h | 2014-05-30 09:00 | 2014-05-30 10:00 |  |  | 24.88d | start no earlier than 2014-05-30 09:00 |
| 23 |  | Definir descripción | 1h | 2014-05-30 09:00 | 2014-05-30 10:00 |  |  | 24.88d | start no earlier than 2014-05-30 09:00 |
| 24 |  | Definir contenido estático y dinámico | 8h | 2014-05-31 09:00 | 2014-05-31 19:00 |  |  | 22d | start no earlier than 2014-05-31 09:00 |
| 25 |  | Construir MasterPage Principal | 8h | 2014-06-03 09:00 | 2014-06-03 19:00 | 24 |  | 21d | start no earlier than 2014-06-03 09:00 |
| 26 | 2.6.2 | **Contacto** | 2.12d | 2014-06-02 09:00 | 2014-06-04 10:00 |  |  | 20.88d |  |
| 27 |  | Definir título | 1h | 2014-06-04 09:00 | 2014-06-04 10:00 |  |  | 20.88d | start no earlier than 2014-06-04 09:00 |
| 28 |  | Definir descripción | 1h | 2014-06-04 09:00 | 2014-06-04 10:00 |  |  | 20.88d | start no earlier than 2014-06-04 09:00 |
| 29 |  | Agregar la información que aparece en página ubicación | 2h | 2014-06-02 09:00 | 2014-06-02 11:00 |  |  | 22.75d | start no earlier than 2014-06-02 09:00 |
| 30 |  | Actualizar transporte público | 1h | 2014-06-02 09:00 | 2014-06-02 10:00 |  |  | 22.88d | start no earlier than 2014-06-02 09:00 |
| 31 |  | Agregar link a fan page Facebook | 2h | 2014-06-02 09:00 | 2014-06-02 11:00 |  |  | 22.75d | start no earlier than 2014-06-02 09:00 |
| 32 |  | Aclarar horarios de atención al público y de administración | 1h | 2014-06-02 09:00 | 2014-06-02 10:00 |  |  | 22.88d | start no earlier than 2014-06-02 09:00 |
| 33 | 2.6.3 | **Villa Devoto** | 2.12d | 2014-06-03 09:00 | 2014-06-05 10:00 |  |  | 19.88d |  |
| 34 |  | Definir título | 1h | 2014-06-05 09:00 | 2014-06-05 10:00 |  |  | 19.88d | start no earlier than 2014-06-05 09:00 |
| 35 |  | Definir descripción | 1h | 2014-06-05 09:00 | 2014-06-05 10:00 |  |  | 19.88d | start no earlier than 2014-06-05 09:00 |
| 36 |  | Agregar direcciones de los lugares | 4h | 2014-06-03 09:00 | 2014-06-03 13:00 |  |  | 21.5d | start no earlier than 2014-06-03 09:00 |
| 37 | 2.6.4 | **Error 404 (Not Found)** | 0.5d | 2014-06-04 09:00 | 2014-06-04 13:00 |  |  | 20.5d |  |
| 38 |  | Definir estructura | 4h | 2014-06-04 09:00 | 2014-06-04 13:00 |  |  | 20.5d | start no earlier than 2014-06-04 09:00 |
| 39 |  | Definir imagen | 2h | 2014-06-04 09:00 | 2014-06-04 11:00 |  |  | 20.75d | start no earlier than 2014-06-04 09:00 |
| 40 |  | Definir texto | 2h | 2014-06-04 09:00 | 2014-06-04 11:00 |  |  | 20.75d | start no earlier than 2014-06-04 09:00 |
| 41 | 2.7 | **Páginas de locales** | 12d | 2014-06-05 09:00 | 2014-06-19 19:00 |  |  | 8d |  |
| 42 |  | Definir títulos | 40h | 2014-06-07 09:00 | 2014-06-12 19:00 |  |  | 13d | start no earlier than 2014-06-07 09:00 |
| 43 |  | Definir descripciones | 40h | 2014-06-07 09:00 | 2014-06-12 19:00 |  |  | 13d | start no earlier than 2014-06-07 09:00 |
| 44 |  | Definir estructura de página | 8h | 2014-06-05 09:00 | 2014-06-05 19:00 |  |  | 8d | start no earlier than 2014-06-05 09:00 |
| 45 |  | Construir MasterPage Local | 8h | 2014-06-06 09:00 | 2014-06-06 19:00 | 44 |  | 8d | start no earlier than 2014-06-06 09:00 |
| 46 |  | Buscar un slider de imágenes y aprender a usarlo | 8h | 2014-06-07 09:00 | 2014-06-07 19:00 |  |  | 17d | start no earlier than 2014-06-07 09:00 |
| 47 |  | Construir páginas | 80h | 2014-06-07 09:00 | 2014-06-19 19:00 | 45 |  | 8d | start no earlier than 2014-06-07 09:00 |
| 48 | 3 | **Construcción de nuevo sitio web mobile** | 10d | 2014-06-23 09:00 | 2014-07-04 19:00 | 14 |  | 3d |  |
| 49 |  | Realizar boceto de sitio web en programa de diseño gráfico | 8h | 2014-06-23 09:00 | 2014-06-23 19:00 |  |  | 12d |  |
| 50 |  | Definir colores | 2h | 2014-06-24 09:00 | 2014-06-24 11:00 |  |  | 11.75d | start no earlier than 2014-06-24 09:00 |
| 51 |  | Definir tipo y tamaño de fuente | 2h | 2014-06-24 09:00 | 2014-06-24 11:00 |  |  | 11.75d | start no earlier than 2014-06-24 09:00 |
| 52 |  | Definir estructura del sitio | 8h | 2014-06-24 09:00 | 2014-06-24 19:00 |  |  | 11d | start no earlier than 2014-06-24 09:00 |
| 53 |  | Definir páginas del sitio | 2h | 2014-06-25 09:00 | 2014-06-25 11:00 |  |  | 10.75d | start no earlier than 2014-06-25 09:00 |
| 54 |  | Construir página principal | 8h | 2014-06-26 09:00 | 2014-06-26 19:00 |  |  | 9d | start no earlier than 2014-06-26 09:00 |
| 55 |  | Construir página de locales | 40h | 2014-06-27 09:00 | 2014-07-03 19:00 |  |  | 4d | start no earlier than 2014-06-27 09:00 |
| 56 |  | Construir página de contacto | 8h | 2014-07-04 09:00 | 2014-07-04 19:00 |  |  | 3d | start no earlier than 2014-07-04 09:00 |
| 57 |  | Prueba integral en navegadores mobile | 8h | 2014-07-04 09:00 | 2014-07-04 19:00 |  |  | 3d | start no earlier than 2014-07-04 09:00 |
| 58 | 4 | **Actualización de datos en Google Places** | 0.25d | 2014-05-19 09:00 A | 2014-05-19 11:00 |  | 33% | 42.75d |  |
| 59 |  | Pedir descripción principal de ficha | 2h | 2014-05-19 09:00 | 2014-05-19 11:00 |  |  | 42.75d |  |
| 60 |  | Sacar el télefono de la ficha | 1h | 2014-05-19 09:00 A | 2014-05-19 10:00 A |  | 100% |  |  |
| 61 | 5 | **Fan page Facebook** | 4d | 2014-07-07 09:00 | 2014-07-10 19:00 | 48 |  | 0d |  |
| 62 |  | Subir Fotos | 2h | 2014-07-07 09:00 | 2014-07-07 11:00 |  |  | 2.25d |  |
| 63 |  | Escribir descripción y proposito de fan page | 4h | 2014-07-08 09:00 | 2014-07-08 13:00 |  |  | 2.5d | start no earlier than 2014-07-08 09:00 |
| 64 |  | Comentar a Gonzalo el proposito de la fan page | 4h | 2014-07-09 09:00 | 2014-07-09 13:00 |  |  | 1.5d | start no earlier than 2014-07-09 09:00 |
| 65 |  | Subir promociones | 8h | 2014-07-10 09:00 | 2014-07-10 19:00 |  |  | 0d | start no earlier than 2014-07-10 09:00 |
| 66 | 6 | **Tareas Repetitivas** | 1d | 2014-05-19 09:00 | 2014-05-19 19:00 |  |  | 42d |  |
| 67 |  | Actualizar documento de SEO | 8h | 2014-05-19 09:00 | 2014-05-19 19:00 |  |  | 42d | start no earlier than 2014-05-19 09:00 |
| 68 |  | Probar sitio web en PC | 8h | 2014-05-19 09:00 | 2014-05-19 19:00 |  |  | 40.5d |  |
| 69 |  | Probar sitio web en dispositivos móviles | 8h | 2014-05-19 09:00 | 2014-05-19 19:00 |  |  | 40.5d |  |

## Version 2 (saved 2014-05-23)

Note of the change: Actualización del calendario

Last finish stays 2014-07-14. Complete tasks 2 → 3.

Changed:

| ID | Task | Start | Finish | Duration | Complete | Total float |
| --- | --- | --- | --- | --- | --- | --- |
| 1 | **Tareas Comunes** |  |  | 43d → 43d? |  |  |
| 2 | Obtener listado completo de locales |  | 2014-05-19 11:00 A → 2014-05-19 10:00 A | 2h → 1h |  |  |
| 3 | Sacar fotos de locales |  |  | 4h → 4h? |  |  |
| 4 | Sacar fotos de galería |  |  | 4h → 4h? |  |  |
| 5 | Tomar snapshot de indicadores (sitio web viejo) |  |  | 4h → 4h? |  |  |
| 6 | Configurar el control de código | 2014-05-23 09:00 A | 2014-05-23 13:00 → 2014-05-23 10:00 A | 4h → 1h | 0% → 100% | 38.5d → none |
| 7 | Detectar user agent con asp.net y redirigir a sitio correcto |  |  | 8h → 8h? |  |  |
| 8 | Validar código HTML |  |  | 8h → 8h? |  |  |
| 9 | Validar código CSS |  |  | 8h → 8h? |  |  |
| 10 | Agregar validaciones HTML y CSS exitosas al sitio web |  |  | 4h → 4h? |  |  |
| 11 | Obtener descripción detallada de locales |  |  | 40h → 40h? |  |  |
| 12 | Obtener productos promocionados por local |  |  | 40h → 40h? |  |  |
| 13 | Prueba UAT (Aceptación de usuario) |  |  | 16h → 16h? |  |  |
| 14 | **Construcción de nuevo sitio web desktop** |  |  | 22d → 22d? |  |  |
| 15 | Realizar boceto de sitio web en programa de diseño gráfico |  |  | 8h → 8h? |  |  |
| 16 | Definir colores |  |  | 2h → 2h? |  |  |
| 17 | Definir tipo y tamaño de fuente |  |  | 2h → 2h? |  |  |
| 18 | Definir resolución mínima sin scroll |  |  | 2h → 2h? |  |  |
| 19 | Prueba integral en navegadores |  |  | 8h → 8h? |  |  |
| 20 | **Páginas web principales** |  |  | 5.12d → 5.12d? |  |  |
| 21 | **Home** |  |  | 4d → 4d? |  |  |
| 22 | Definir título |  |  | 1h → 1h? |  |  |
| 23 | Definir descripción |  |  | 1h → 1h? |  |  |
| 24 | Definir contenido estático y dinámico |  |  | 8h → 8h? |  |  |
| 25 | Construir MasterPage Principal |  |  | 8h → 8h? |  |  |
| 26 | **Contacto** |  |  | 2.12d → 2.12d? |  |  |
| 27 | Definir título |  |  | 1h → 1h? |  |  |
| 28 | Definir descripción |  |  | 1h → 1h? |  |  |
| 29 | Agregar la información que aparece en página ubicación |  |  | 2h → 2h? |  |  |
| 30 | Actualizar transporte público |  |  | 1h → 1h? |  |  |
| 31 | Agregar link a fan page Facebook |  |  | 2h → 2h? |  |  |
| 32 | Aclarar horarios de atención al público y de administración |  |  | 1h → 1h? |  |  |
| 33 | **Villa Devoto** |  |  | 2.12d → 2.12d? |  |  |
| 34 | Definir título |  |  | 1h → 1h? |  |  |
| 35 | Definir descripción |  |  | 1h → 1h? |  |  |
| 36 | Agregar direcciones de los lugares |  |  | 4h → 4h? |  |  |
| 37 | **Error 404 (Not Found)** |  |  | 0.5d → 0.5d? |  |  |
| 38 | Definir estructura |  |  | 4h → 4h? |  |  |
| 39 | Definir imagen |  |  | 2h → 2h? |  |  |
| 40 | Definir texto |  |  | 2h → 2h? |  |  |
| 41 | **Páginas de locales** |  |  | 12d → 12d? |  |  |
| 42 | Definir títulos |  |  | 40h → 40h? |  |  |
| 43 | Definir descripciones |  |  | 40h → 40h? |  |  |
| 44 | Definir estructura de página |  |  | 8h → 8h? |  |  |
| 45 | Construir MasterPage Local |  |  | 8h → 8h? |  |  |
| 46 | Buscar un slider de imágenes y aprender a usarlo |  |  | 8h → 8h? |  |  |
| 47 | Construir páginas |  |  | 80h → 80h? |  |  |
| 48 | **Construcción de nuevo sitio web mobile** |  |  | 10d → 10d? |  |  |
| 49 | Realizar boceto de sitio web en programa de diseño gráfico |  |  | 8h → 8h? |  |  |
| 50 | Definir colores |  |  | 2h → 2h? |  |  |
| 51 | Definir tipo y tamaño de fuente |  |  | 2h → 2h? |  |  |
| 52 | Definir estructura del sitio |  |  | 8h → 8h? |  |  |
| 53 | Definir páginas del sitio |  |  | 2h → 2h? |  |  |
| 54 | Construir página principal |  |  | 8h → 8h? |  |  |
| 55 | Construir página de locales |  |  | 40h → 40h? |  |  |
| 56 | Construir página de contacto |  |  | 8h → 8h? |  |  |
| 57 | Prueba integral en navegadores mobile |  |  | 8h → 8h? |  |  |
| 58 | **Actualización de datos en Google Places** |  |  | 0.25d → 0.25d? |  | 42.75d → 40.75d |
| 59 | Pedir descripción principal de ficha |  |  | 2h → 2h? |  | 42.75d → 40.75d |
| 61 | **Fan page Facebook** |  |  | 4d → 4d? |  |  |
| 62 | Subir Fotos |  |  | 2h → 2h? |  | 2.25d → 3.75d |
| 63 | Escribir descripción y proposito de fan page |  |  | 4h → 4h? |  |  |
| 64 | Comentar a Gonzalo el proposito de la fan page |  |  | 4h → 4h? |  |  |
| 65 | Subir promociones |  |  | 8h → 8h? |  |  |
| 66 | **Tareas Repetitivas** |  |  | 1d → 1d? |  |  |
| 67 | Actualizar documento de SEO |  |  | 8h → 8h? |  |  |
| 68 | Probar sitio web en PC |  |  | 8h → 8h? |  | 40.5d → 42d |
| 69 | Probar sitio web en dispositivos móviles |  |  | 8h → 8h? |  | 40.5d → 42d |

## Version 3 (saved 2014-05-24)

Note of the change: Actualización de tareas

Last finish stays 2014-07-14.

Added:

| ID | Task | Duration | Start | Finish | Constraint | Resources |
| --- | --- | --- | --- | --- | --- | --- |
| 8 | Preparar el hosting Dattatec para funcionar con ASP.NET | 2h? | 2014-05-27 09:00 | 2014-05-27 11:00 | start no earlier than 2014-05-27 09:00 | Gustavo |

## Version 4 (saved 2014-05-31)

Last finish stays 2014-07-14. Complete tasks 3 → 4.

Changed:

| ID | Task | Start | Finish | Duration | Complete | Total float |
| --- | --- | --- | --- | --- | --- | --- |
| 1 | **Tareas Comunes** |  |  |  | 1% → 3% |  |
| 3 | Sacar fotos de locales | 2014-05-28 12:00 → 2014-05-28 16:00 A |  | 4h? → 2h | 0% → 50% |  |
| 8 | Preparar el hosting Dattatec para funcionar con ASP.NET | 2014-05-27 09:00 A | 2014-05-27 11:00 → 2014-05-27 10:00 A | 2h? → 1h | 0% → 100% | 36.75d → none |

## Version 5 (saved 2014-06-01)

Note of the change: Actualización de estructura de directorios

Last finish stays 2014-07-14. Complete tasks 4 → 5.

Changed:

| ID | Task | Start | Finish | Duration | Complete | Total float |
| --- | --- | --- | --- | --- | --- | --- |
| 15 | **Construcción de nuevo sitio web desktop** | 2014-05-26 09:00 A |  |  |  |  |
| 19 | Definir resolución mínima sin scroll | 2014-05-29 09:00 A | 2014-05-29 11:00 → 2014-05-29 10:00 A | 2h? → 1h | 0% → 100% | 26.75d → none |
